# TU 2.0

Schedule from ProjectLibre, 2013-06-01 to 2013-12-27.

## Calendars

- Standard: Mon-Fri 08:00-12:00, 13:00-17:00; Sat-Sun off.

## Resources

| Resource | Group |
| --- | --- |
| Не назначено |  |
| Alex | developer |
| Max | developer |
| Vadim | tester |

## Schedule

| ID | WBS | Task | Duration | Start | Finish | Predecessors | Total slack | Constraint | Resources |
| --- | --- | --- | --- | --- | --- | --- | --- | --- | --- |
| 1 | 1 | Start project | 0d | 2013-06-01 | 2013-06-03 |  |  | start no earlier than 2013-06-01 |  |
| 2 | 2 | **Preliminary development** | 60.83d | 2013-06-04 | 2013-08-27 |  | 8800d |  |  |
| 3 | 2.1 | Version 1.0 bugs | 7.5d | 2013-06-04 | 2013-06-13 | 1 |  |  | Alex; Max |
| 4 | 2.2 | Version 1.0 improvements | 7d | 2013-06-13 | 2013-06-24 | 1, 3 |  |  | Alex; Max |
| 5 | 2.3 | Version 1.0 Fixes | 0d | 2013-06-24 | 2013-06-24 | 4, 3 | 13433.3d |  |  |
| 6 | 2.4 | Refactor to get rid of KBAdapter addressing | 2d | 2013-06-24 | 2013-06-26 | 4 |  |  | Max |
| 7 | 2.5 | Test and debug | 2d | 2013-06-26 | 2013-06-28 | 6, 3 |  |  | Max; Vadim |
| 8 | 2.6 | Merge training and request mode | 2d | 2013-06-24 | 2013-06-26 | 4 | 50d |  | Alex |
| 9 | 2.7 | Test and debug | 1.5d | 2013-06-26 | 2013-06-27 | 8 | 50d |  | Alex; Vadim |
| 10 | 2.8 | HowTo training | 1.5d | 2013-06-28 | 2013-07-01 | 7, 9 |  |  | Alex; Max |
| 11 | 2.9 | Test and debug | 1.5d | 2013-07-02 | 2013-07-03 | 10 |  |  | Alex; Vadim |
| 12 | 2.10 | 6 thinking levels | 5d | 2013-07-03 | 2013-07-10 | 10, 11 |  |  | Alex; Max |
| 13 | 2.11 | Test and debug | 5d | 2013-07-10 | 2013-07-17 | 12 |  |  | Alex; Max |
| 14 | 2.12 | Integration | 5d | 2013-07-17 | 2013-07-24 | 12, 13 |  |  | Alex; Max |
| 15 | 2.13 | Mandatory improvements | 0d | 2013-07-24 | 2013-07-24 | 14 | 10833.3d |  |  |
| 16 | 2.14 | Time concept | 3d | 2013-07-24 | 2013-07-29 | 14 |  |  | Alex |
| 17 | 2.15 | Personality manager | 5d | 2013-07-29 | 2013-08-05 | 16 |  |  | Alex; Max |
| 18 | 2.16 | Test and bebug | 3.33d | 2013-08-05 | 2013-08-08 | 17 |  |  | Alex; Max; Vadim |
| 19 | 2.17 | Instinctive level | 3d | 2013-07-24 | 2013-07-29 | 15 | 10833.3d |  | Max |
| 20 | 2.18 | Test and debug | 1d | 2013-07-29 | 2013-07-30 | 19 | 10833.3d |  | Max |
| 21 | 2.19 | Emotions | 6.5d | 2013-08-08 | 2013-08-19 | 18 |  |  | Alex; Max |
| 22 | 2.20 | Integration | 3.5d | 2013-08-19 | 2013-08-22 | 21 |  |  | Alex; Max |
| 23 | 2.21 | Test and debug | 3d | 2013-08-22 | 2013-08-27 | 22 |  |  | Alex; Max; Vadim |
| 24 | 2.22 | Supplemental improvements | 0d | 2013-08-27 | 2013-08-27 | 23 |  |  |  |

| ID | WBS | Task | Duration | Start | Finish | Predecessors | Total slack | Resources |
| --- | --- | --- | --- | --- | --- | --- | --- | --- |
| 25 | 3 | **Analyser** | 37d | 2013-08-27 | 2013-10-17 |  |  |  |
| 26 | 3.1 | JNI PLN | 7.5d | 2013-08-27 | 2013-09-06 | 24 |  | Alex; Max |
| 27 | 3.2 | Test and debug | 7.5d | 2013-09-06 | 2013-09-17 | 26 |  | Alex; Max |
| 28 | 3.3 | Inductive reasoning | 3.5d | 2013-09-17 | 2013-09-23 | 27 |  | Alex; Max |
| 29 | 3.4 | Test and debug | 1.5d | 2013-09-23 | 2013-09-24 | 28 |  | Alex; Max |
| 30 | 3.5 | Deductive reasoning | 3d | 2013-09-24 | 2013-09-27 | 29 |  | Alex; Max |
| 31 | 3.6 | Test and debug | 1.5d | 2013-09-27 | 2013-10-01 | 30 |  | Alex; Max |
| 32 | 3.7 | Abductive reasoning | 4d | 2013-10-01 | 2013-10-07 | 31 |  | Alex; Max |
| 33 | 3.8 | Test and debug | 2d | 2013-10-07 | 2013-10-09 | 32 |  | Alex; Max |
| 34 | 3.9 | Integration | 3.5d | 2013-10-09 | 2013-10-14 | 33 |  | Alex; Max |
| 35 | 3.10 | Testing | 3d | 2013-10-14 | 2013-10-17 | 34 |  | Vadim |
| 36 | 3.11 | Analyser | 0d | 2013-10-17 | 2013-10-17 | 35 |  |  |
| 37 | 4 | **Smart Applicator** | 51d | 2013-10-17 | 2013-12-27 |  |  |  |
| 38 | 4.1 | Smart Applicator | 10d | 2013-10-17 | 2013-10-31 | 36 |  | Alex; Max |
| 39 | 4.2 | Test and debug | 5d | 2013-10-31 | 2013-11-07 | 38 |  | Alex; Max; Vadim |
| 40 | 4.3 | Smart feedback analyser | 7.5d | 2013-11-07 | 2013-11-19 | 39 |  | Alex; Max |
| 41 | 4.4 | Test and debug | 3.5d | 2013-11-19 | 2013-11-22 | 40 |  | Alex; Max |
| 42 | 4.5 | Smart reporter | 5d | 2013-11-22 | 2013-11-29 | 41 |  | Alex; Max |
| 43 | 4.6 | Test and debug | 5d | 2013-11-29 | 2013-12-06 | 42 |  | Alex; Max |
| 44 | 4.7 | Testing | 15d | 2013-12-06 | 2013-12-27 | 43 |  | Vadim |
| 45 | 4.8 | Smart applicator | 0d | 2013-12-27 | 2013-12-27 | 44 |  |  |
| 46 | 5 | Extend user interface with smart console | 4d | 2013-12-06 | 2013-12-12 | 43 | 700d | Alex |
| 47 | 6 | Test and debug | 2d | 2013-12-12 | 2013-12-16 | 46 | 700d | Alex; Vadim |
| 48 | 7 | Domain expert guide | 2d | 2013-12-16 | 2013-12-18 | 47 | 700d | Alex |
| 49 | 8 | Explore feelings | 10d | 2013-12-06 | 2013-12-20 | 43 | 500d | Max |
| 50 | 9 | First phase end | 0d | 2013-12-27 | 2013-12-27 | 47, 44, 49, 48 |  |  |
