# Menta 0.3 research

Schedule from GanttProject, 2012-01-16 to 2014-05-08.
Research project to automate the incident handling.

## Calendars

- Project calendar: Mon-Fri working; Sat-Sun off.

## Resources

| Resource | Group |
| --- | --- |
| Max | Architect |
| Alex | Team lead |
| Adel | Developer |
| Bulat | Developer |
| Renat | Developer |
| Artem | Developer |

## Schedule

| ID | WBS | Task | Type | Duration | Start | Finish | Predecessors | Resources |
| --- | --- | --- | --- | --- | --- | --- | --- | --- |
| 1 | 1 | **Analysis** |  | 31d | 2012-01-16 | 2012-02-27 |  |  |
| 2 | 1.1 | Incidents |  | 15d | 2012-01-16 | 2012-02-03 |  | Alex [50%]; Max |
| 3 | 1.2 | Workbook articles |  | 16d | 2012-02-06 | 2012-02-27 | 2 | Alex; Max |
| 4 | 2 | **Design Emotion Machine** |  | 44d | 2012-01-23 | 2012-03-22 |  |  |
| 5 | 2.1 | Inbound textual description |  | 2d | 2012-01-23 | 2012-01-24 |  | Alex |
| 6 | 2.2 | Internal knowledge(atom) representations |  | 10d | 2012-01-23 | 2012-02-03 |  | Max |
| 7 | 2.3 | Formalization outbound structures |  | 10d | 2012-02-06 | 2012-02-17 | 6 | Max |
| 8 | 2.4 | Design Solution HowTo-s |  | 16d | 2012-01-25 | 2012-02-15 | 5 | Alex |
| 9 | 2.5 | Design Critics |  | 12d | 2012-02-20 | 2012-03-06 | 7 | Max |
| 10 | 2.6 | Design Selector |  | 12d | 2012-02-16 | 2012-03-02 | 8 | Alex |
| 11 | 2.7 | Design Way2Think |  | 12d | 2012-03-07 | 2012-03-22 | 9 | Max |
| 12 | 3 | Analysis and design | milestone | 0d | 2012-03-23 | 2012-03-23 | 1, 4 | Alex |
| 13 | 4 | **OpenCog prototype** |  | 102d | 2012-03-05 | 2012-07-24 | 1 |  |
| 14 | 4.1 | **CogBuntu** |  | 5d | 2012-03-05 | 2012-03-09 |  |  |
| 15 | 4.1.1 | Red documentation |  | 1d | 2012-03-05 | 2012-03-05 | 10 | Alex; Max |
| 16 | 4.1.2 | Install CogBuntu |  | 4d | 2012-03-06 | 2012-03-09 | 15 | Alex; Max |
| 17 | 4.2 | **AtomSpace Analysis** |  | 23d | 2012-03-12 | 2012-04-11 | 14 | Alex |
| 18 | 4.2.1 | Read documentation |  | 4d | 2012-03-12 | 2012-03-15 |  | Alex |
| 19 | 4.2.2 | Test storage using Cookbook |  | 8d | 2012-03-16 | 2012-03-27 | 18 | Alex |
| 20 | 4.2.3 | Test storage usability for knowledge representation |  | 10d | 2012-03-29 | 2012-04-11 | 19, 23 | Alex; Max |
| 21 | 4.3 | **Probability Logic Engines analysis** |  | 21d | 2012-03-23 | 2012-04-20 | 14 | Max |
| 22 | 4.3.1 | **PLN analysis** |  | 18d | 2012-03-23 | 2012-04-17 | 11 | Max |
| 23 | 4.3.1.1 | Read documentation |  | 4d | 2012-03-23 | 2012-03-28 |  | Max |
| 24 | 4.3.1.2 | Test PLN using NARS data |  | 4d | 2012-04-12 | 2012-04-17 | 20, 23 | Alex; Max |
| 25 | 4.3.2 | Bayesian inference |  | 16d | 2012-04-18 | 2012-05-09 | 24 | Alex; Max |

| ID | WBS | Task | Type | Duration | Start | Finish | Predecessors | Resources |
| --- | --- | --- | --- | --- | --- | --- | --- | --- |
| 26 | 4.4 | **Embodiment** |  | 36d | 2012-05-10 | 2012-06-28 | 16, 17, 25 | Alex; Max |
| 27 | 4.4.1 | Read documentation |  | 16d | 2012-05-10 | 2012-05-31 | 25 | Alex; Max |
| 28 | 4.4.2 | Test embodiment system to simulate Intellix |  | 20d | 2012-06-01 | 2012-06-28 | 27 | Alex; Max |
| 29 | 4.5 | **Natural language processors** |  | 18d | 2012-06-29 | 2012-07-24 | 14, 16, 21, 26 | Alex; Max |
| 30 | 4.5.1 | RelEx |  | 8d | 2012-06-29 | 2012-07-10 |  |  |
| 31 | 4.5.2 | Stanford Parser |  | 4d | 2012-07-11 | 2012-07-16 | 30 |  |
| 32 | 4.5.3 | OpenNLP |  | 6d | 2012-07-17 | 2012-07-24 | 31 |  |
| 33 | 5 | OpenCog analysis | milestone | 0d | 2012-07-25 | 2012-07-25 | 13, 32 |  |
| 34 | 6 | **System Training prototype** |  | 214d | 2012-07-25 | 2013-05-20 | 14, 33 |  |
| 35 | 6.1 | MOSES |  | 18d | 2012-07-25 | 2012-08-17 | 29 | Alex; Max |
| 36 | 6.2 | Bayesian network |  | 16d | 2012-08-20 | 2012-09-10 | 35 | Alex; Max |
| 37 | 6.3 | **Training** |  | 15d | 2012-09-12 | 2012-10-02 | 36 |  |
| 38 | 6.3.1 | **Training data structures** |  | 15d | 2012-09-12 | 2012-10-02 |  |  |
| 39 | 6.3.1.1 | Incident description |  | 1d | 2012-09-12 | 2012-09-12 | 10 | Alex |
| 40 | 6.3.1.2 | Incident category |  | 1d | 2012-09-12 | 2012-09-12 |  | Max |
| 41 | 6.3.1.3 | **Incident formalized description** |  | 12d | 2012-09-13 | 2012-09-28 | 11 | Max |
| 42 | 6.3.1.3.1 | Model |  | 12d | 2012-09-13 | 2012-09-28 | 39 | Alex |
| 43 | 6.3.1.4 | Incident solution(Migrate HowTo approach |  | 14d | 2012-09-13 | 2012-10-02 | 40 | Max |
| 44 | 6.4 | **Create formalized description generalisation mechanism** |  | 38d | 2012-10-01 | 2012-11-21 | 43 |  |
| 45 | 6.4.1 | **Create common parts selector and variable introducer** |  | 38d | 2012-10-01 | 2012-11-21 |  |  |
| 46 | 6.4.1.1 | Comparator |  | 8d | 2012-10-01 | 2012-10-10 | 42 | Alex |
| 47 | 6.4.1.2 | Recursive runner |  | 8d | 2012-10-03 | 2012-10-12 | 43 | Max |
| 48 | 6.4.1.3 | **Variable introducer** |  | 28d | 2012-10-15 | 2012-11-21 |  |  |
| 49 | 6.4.1.3.1 | Design variable structure |  | 4d | 2012-10-15 | 2012-10-18 | 47 | Max |
| 50 | 6.4.1.3.2 | Implement and test variable |  | 8d | 2012-10-19 | 2012-10-30 | 49 | Max |
| 51 | 6.4.1.3.3 | Named variables builder |  | 8d | 2012-10-31 | 2012-11-09 | 50 | Max |
| 52 | 6.4.1.3.4 | Unnamed variables builder |  | 8d | 2012-11-12 | 2012-11-21 | 1, 51 | Max |

| ID | WBS | Task | Type | Duration | Start | Finish | Predecessors | Resources |
| --- | --- | --- | --- | --- | --- | --- | --- | --- |
| 53 | 6.5 | **Incident classification algorithm** |  | 34d | 2012-10-11 | 2012-11-27 |  |  |
| 54 | 6.5.1 | **Create test data for KnowledgeBaseAnnotator** |  | 34d | 2012-10-11 | 2012-11-27 |  |  |
| 55 | 6.5.1.1 | Allowed Software list |  | 8d | 2012-10-11 | 2012-10-22 | 26, 46 | Alex |
| 56 | 6.5.1.2 | Over software actions |  | 6d | 2012-10-23 | 2012-10-30 | 35, 55 | Alex |
| 57 | 6.5.1.3 | Software attributes |  | 16d | 2012-10-31 | 2012-11-21 | 47, 56 | Alex |
| 58 | 6.5.1.4 | Software states |  | 4d | 2012-11-22 | 2012-11-27 | 43, 52, 57 | Alex; Max |
| 59 | 6.6 | **Create validation criteria inference approach** |  | 124d | 2012-11-28 | 2013-05-20 |  |  |
| 60 | 6.6.1 | Analyse validation criteria types |  | 10d | 2012-11-28 | 2012-12-11 | 58 | Alex; Max |
| 61 | 6.6.2 | Create descriptions via predicates (logical operations) |  | 14d | 2012-12-12 | 2012-12-31 | 52, 60 | Alex; Max |
| 62 | 6.6.3 | **Create validation mechanism possibly via PLN** |  | 20d | 2013-01-01 | 2013-01-28 |  |  |
| 63 | 6.6.3.1 | Design adapter |  | 8d | 2013-01-01 | 2013-01-10 | 60, 61 | Alex; Max |
| 64 | 6.6.3.2 | Implement adapter |  | 12d | 2013-01-11 | 2013-01-28 | 56, 63 | Alex; Max |
| 65 | 6.6.4 | **Create Solution generation prototype** |  | 80d | 2013-01-29 | 2013-05-20 |  |  |
| 66 | 6.6.4.1 | HowTo types = 16 - 40 |  | 20d | 2013-01-29 | 2013-02-25 | 61, 64 | Alex; Max |
| 67 | 6.6.4.2 | Solution description language = 32 - 40 |  | 20d | 2013-02-26 | 2013-03-25 | 61, 66 | Alex; Max |
| 68 | 6.6.4.3 | Create 10 Solution descriptions = 16 - 32 |  | 16d | 2013-03-26 | 2013-04-16 | 64, 67 | Alex; Max |
| 69 | 6.6.4.4 | **Train Solutions** |  | 24d | 2013-04-17 | 2013-05-20 |  |  |
| 70 | 6.6.4.4.1 | Analyse machine learning algorithms (C 4.5, Bayes network) = 16 - 24 |  | 12d | 2013-04-17 | 2013-05-02 | 64, 68 | Alex; Max |
| 71 | 6.6.4.4.2 | Train 10 Solutions (in: formalised problem description, out Solution) = 16 - 24 |  | 12d | 2013-05-03 | 2013-05-20 | 51, 70 | Alex; Max |
| 72 | 7 | Training prototype milestone | milestone | 0d | 2013-05-21 | 2013-05-21 | 34 |  |
| 73 | 8 | **AIV Solution, for the specification see page.** |  | 137d | 2013-05-24 | 2013-12-02 | 72 |  |
| 74 | 8.1 | **Auto-correct analysis should use measures: precision, recall and F-measure** |  | 12d | 2013-05-24 | 2013-06-10 |  |  |
| 75 | 8.1.1 | **AbiWord** |  | 6d | 2013-05-24 | 2013-05-31 |  |  |
| 76 | 8.1.1.1 | Read Syntax check module documentation = 1 |  | 1d | 2013-05-24 | 2013-05-24 |  | Max |
| 77 | 8.1.1.2 | Install AbiWord = 1 - 2 |  | 1d | 2013-05-27 | 2013-05-27 | 76 | Max |
| 78 | 8.1.1.3 | Test 10 incidents descriptions = 3.5 - 4 |  | 4d | 2013-05-28 | 2013-05-31 | 77 | Max |

| ID | WBS | Task | Duration | Start | Finish | Predecessors | Resources |
| --- | --- | --- | --- | --- | --- | --- | --- |
| 79 | 8.1.2 | **OpenOffice(LibreOffice)** | 6d | 2013-05-24 | 2013-05-31 |  |  |
| 80 | 8.1.2.1 | Read Auto-correct module documentation OpenOffice LibreOffice = 1 | 1d | 2013-05-24 | 2013-05-24 |  | Alex |
| 81 | 8.1.2.2 | Install OpenOffice or LibreOffice = 1 - 2 | 1d | 2013-05-27 | 2013-05-27 | 80 | Alex |
| 82 | 8.1.2.3 | Test 10 incidents descriptions = 3.5 - 4 | 4d | 2013-05-28 | 2013-05-31 | 81 | Alex |
| 83 | 8.1.3 | **OpenCog** | 6d | 2013-06-03 | 2013-06-10 | 78 |  |
| 84 | 8.1.3.1 | Read Auto-correct module documentation Grammatical correction = 1 - 2 | 1d | 2013-06-03 | 2013-06-03 |  | Max |
| 85 | 8.1.3.2 | Install OpenCog = 1 - 2 | 1d | 2013-06-04 | 2013-06-04 | 84 | Max |
| 86 | 8.1.3.3 | Test 10 incidents descriptions = 3.5 - 4 | 4d | 2013-06-05 | 2013-06-10 | 85 | Max |
| 87 | 8.1.4 | **KOffice** | 6d | 2013-06-03 | 2013-06-10 | 82 |  |
| 88 | 8.1.4.1 | Read Auto-correct module documentation = 1 - 2 | 1d | 2013-06-03 | 2013-06-03 |  | Alex |
| 89 | 8.1.4.2 | Install KOffice = 1 - 4 [Could be not strait forward under Win] | 1d | 2013-06-04 | 2013-06-04 | 88 | Alex |
| 90 | 8.1.4.3 | Test 10 incidents descriptions = 3.5 - 4 | 4d | 2013-06-05 | 2013-06-10 | 89 | Alex |
| 91 | 8.2 | **KnowledgeBaseAnnotator, see specification. knowledge base integration analysis.** | 125d | 2013-06-11 | 2013-12-02 |  |  |
| 92 | 8.2.1 | **WolframAlpha** | 25d | 2013-06-11 | 2013-07-15 |  |  |
| 93 | 8.2.1.1 | Explore API to integrate = 10 - 20 [could be not strait forward] | 10d | 2013-06-11 | 2013-06-24 | 86, 90 | Alex; Max |
| 94 | 8.2.1.2 | Test information retrieval and annotation options = 20 - 30 [could contain information not from SE domain] | 15d | 2013-06-25 | 2013-07-15 | 93 | Alex; Max |
| 95 | 8.2.2 | **TrueKnowledge** | 25d | 2013-07-16 | 2013-08-19 |  |  |
| 96 | 8.2.2.1 | Explore API to integrate = 10 - 20 [could be not strait forward] | 10d | 2013-07-16 | 2013-07-29 | 94 | Alex; Max |
| 97 | 8.2.2.2 | Test information retrieval and annotation options = 20 - 30 [could contain information not from SE domain] | 15d | 2013-07-30 | 2013-08-19 | 96 | Alex; Max |
| 98 | 8.2.3 | **ConceptNet** | 25d | 2013-08-20 | 2013-09-23 |  |  |
| 99 | 8.2.3.1 | Explore API to integrate = 10 - 20 [could be not strait forward] | 10d | 2013-08-20 | 2013-09-02 | 78, 97 | Alex; Max |
| 100 | 8.2.3.2 | Test information retrieval and annotation options = 20 - 30 [could contain information not from SE domain] | 15d | 2013-09-03 | 2013-09-23 | 99 | Alex; Max |
| 101 | 8.2.4 | **ConceptNet5** | 25d | 2013-09-24 | 2013-10-28 |  |  |
| 102 | 8.2.4.1 | Explore API to integrate = 10 - 20 [could be not strait forward] | 10d | 2013-09-24 | 2013-10-07 | 82, 100 | Alex; Max |
| 103 | 8.2.4.2 | Test information retrieval and annotation options = 20 - 30 [could contain information not from SE domain] | 15d | 2013-10-08 | 2013-10-28 | 102 | Alex; Max |

| ID | WBS | Task | Type | Duration | Start | Finish | Predecessors | Resources |
| --- | --- | --- | --- | --- | --- | --- | --- | --- |
| 104 | 8.2.5 | **WordNet, is integrated in ConceptNet5 but could be useful standalone** |  | 25d | 2013-10-29 | 2013-12-02 |  |  |
| 105 | 8.2.5.1 | Explore API to integrate = 10 - 20 [could be not strait forward] |  | 10d | 2013-10-29 | 2013-11-11 | 86, 103 | Alex; Max |
| 106 | 8.2.5.2 | Test information retrieval and annotation options = 20 - 30 [could contain information not from SE domain] |  | 15d | 2013-11-12 | 2013-12-02 | 105 | Alex; Max |
| 107 | 9 | AIV Solution | milestone | 0d | 2013-12-03 | 2013-12-03 | 73, 106 |  |
| 108 | 10 | **Emotion Machine Soltion** |  | 111d | 2013-12-04 | 2014-05-07 | 107 |  |
| 109 | 10.1 | **Prototype Critics, Way2Think, Selector** |  | 35d | 2013-12-04 | 2014-01-21 |  |  |
| 110 | 10.1.1 | **Implement Critics** |  | 35d | 2013-12-04 | 2014-01-21 |  |  |
| 111 | 10.1.1.1 | **Deliberative Critics** |  | 16d | 2013-12-04 | 2013-12-25 |  |  |
| 112 | 10.1.1.1.1 | Current activity goal representation = 6 - 8 [possibly should try several approaches] |  | 8d | 2013-12-04 | 2013-12-13 |  | Max |
| 113 | 10.1.1.1.2 | Current task state representation = 4 - 6 [possibly should try several representations] |  | 6d | 2013-12-04 | 2013-12-11 |  | Alex |
| 114 | 10.1.1.1.3 | Reasoning over current state with Reasoner adapter development = 8 - 10 |  | 10d | 2013-12-12 | 2013-12-25 | 113 | Alex |
| 115 | 10.1.1.2 | **Reflective Critic** |  | 12d | 2013-12-16 | 2013-12-31 |  |  |
| 116 | 10.1.1.2.1 | **Develop Energy control mechanism.** |  | 12d | 2013-12-16 | 2013-12-31 |  |  |
| 117 | 10.1.1.2.1.1 | Design Energy concept = 4 |  | 4d | 2013-12-16 | 2013-12-19 | 112 | Max |
| 118 | 10.1.1.2.1.2 | Design Energy assignment mechanism during training = 2 |  | 2d | 2013-12-20 | 2013-12-23 | 117 | Max |
| 119 | 10.1.1.2.1.3 | Implement Energy concept = 2 |  | 2d | 2013-12-24 | 2013-12-25 | 117, 118 | Max |
| 120 | 10.1.1.2.1.4 | Implement Energy assignment mechanism = 4 |  | 4d | 2013-12-26 | 2013-12-31 | 118, 119 | Max |
| 121 | 10.1.1.3 | **Develop Sub-goal control mechanism.** |  | 8d | 2013-12-26 | 2014-01-06 |  |  |
| 122 | 10.1.1.3.1 | Design sub-goal control mechanism = 4 |  | 4d | 2013-12-26 | 2013-12-31 | 114 | Alex |
| 123 | 10.1.1.3.2 | Implement sub-goal control mechanism = 4 |  | 4d | 2014-01-01 | 2014-01-06 | 122 | Alex |
| 124 | 10.1.1.4 | **Develop Evidence control mechanism.** |  | 15d | 2014-01-01 | 2014-01-21 |  |  |
| 125 | 10.1.1.4.1 | Design Evidence control mechanism = 4 - 10 [no clear understanding of evidence control mechanism, possibly further research required] |  | 10d | 2014-01-01 | 2014-01-14 | 112, 120 | Max |
| 126 | 10.1.1.4.2 | Implement Evidence control mechanism = 4 - 10 |  | 5d | 2014-01-15 | 2014-01-21 | 125 | Alex; Max |
| 127 | 10.2 | Prototype Selector = 6 - 8 |  | 8d | 2014-01-07 | 2014-01-16 | 117, 123 | Alex |

| ID | WBS | Task | Type | Duration | Start | Finish | Predecessors | Resources |
| --- | --- | --- | --- | --- | --- | --- | --- | --- |
| 128 | 10.3 | **Prototype Way2Think** |  | 72d | 2014-01-17 | 2014-04-28 |  |  |
| 129 | 10.3.1 | Create base constructs(HowTo-s) = 2 - 4 |  | 2d | 2014-01-17 | 2014-01-20 | 119, 127 | Alex; Max |
| 130 | 10.3.2 | Knowing How (select from KB) = 4 - 8 |  | 4d | 2014-01-21 | 2014-01-24 | 120, 129 | Alex; Max |
| 131 | 10.3.3 | Extensive Search (search in KB) = 12 - 24 [graph search could be not strait-forward] |  | 12d | 2014-01-27 | 2014-02-11 | 126, 129, 130 | Alex; Max |
| 132 | 10.3.4 | Reasoning by Analogy = 32 - 40 [graph analogy API could be not strait forward] |  | 20d | 2014-02-12 | 2014-03-11 | 114, 127, 131 | Alex; Max |
| 133 | 10.3.5 | **Divide and Conquer** |  | 22d | 2014-03-12 | 2014-04-10 |  |  |
| 134 | 10.3.5.1 | **Add analytical HowTo-s to basic set:** |  | 6d | 2014-03-12 | 2014-03-19 |  |  |
| 135 | 10.3.5.1.1 | Wrong software was installed = 4 |  | 4d | 2014-03-12 | 2014-03-17 | 126, 132 | Alex; Max |
| 136 | 10.3.5.1.2 | Two direct instructions in one incident description = 4 |  | 2d | 2014-03-18 | 2014-03-19 | 130, 135 | Alex; Max |
| 137 | 10.3.5.2 | **Add Interpretation mechanism over current state of the system** |  | 16d | 2014-03-20 | 2014-04-10 |  |  |
| 138 | 10.3.5.2.1 | Variable and current state addressing = 12 - 16 |  | 8d | 2014-03-20 | 2014-03-31 | 136 | Alex; Max |
| 139 | 10.3.5.2.2 | Logical operation execution = 16 |  | 8d | 2014-04-01 | 2014-04-10 | 135, 138 | Alex; Max |
| 140 | 10.3.6 | **Simulation (build the model based on inbound information) =** |  | 12d | 2014-04-11 | 2014-04-28 | 139 |  |
| 141 | 10.3.6.1 | Search for concept in the KB. = 16 |  | 8d | 2014-02-12 | 2014-02-21 | 131 | Alex; Max |
| 142 | 10.3.6.2 | Search for properties in KB. = 4 |  | 2d | 2014-03-12 | 2014-03-13 | 132, 141 | Alex; Max |
| 143 | 10.3.6.3 | Create connections of found concepts. = 2 |  | 2d | 2014-03-14 | 2014-03-17 | 132, 142 | Alex |
| 144 | 10.3.6.4 | Support context. = 2 |  | 2d | 2014-04-01 | 2014-04-02 | 138, 142 | Max |
| 145 | 10.4 | **Test main perceiving workflow** |  | 7d | 2014-04-29 | 2014-05-07 |  |  |
| 146 | 10.4.1 | Prototype Main Workflow. = 10 - 14 [some not well tested bugs could slow down the development]{Models, Critics, Way2Think ready to use} |  | 7d | 2014-04-03 | 2014-04-11 | 143, 144 | Alex; Max |
| 147 | 11 | Emotion machine solution | milestone | 0d | 2014-05-08 | 2014-05-08 | 108 |  |
